How a schedule from ProjectLibre changed from version to version. A marks actual dates.

## Version 1 (saved 2026-05-13)

Note of the change: include remaining workspace changes

| ID | WBS | Task | Duration | Start | Finish | Predecessors | Complete |
| --- | --- | --- | --- | --- | --- | --- | --- |
| 1 | 1 | **Three-story Office Building (76,000 square feet)** | 344d | 2000-01-03 | 2001-04-26 |  |  |
| 2 | 1.1 | **General Conditions** | 17d | 2000-01-03 | 2000-01-25 |  | 9% |
| 3 |  | Receive notice to proceed and sign contract | 3d | 2000-01-03 | 2000-01-05 |  |  |
| 4 |  | Submit bond and insurance documents | 2d | 2000-01-06 | 2000-01-07 | 3 | 100% |
| 5 |  | Prepare and submit project schedule | 2d | 2000-01-10 | 2000-01-11 | 4 |  |
| 6 |  | Prepare and submit schedule of values | 2d | 2000-01-12 | 2000-01-13 | 5 |  |
| 7 |  | Obtain building permits | 4d | 2000-01-06 | 2000-01-11 | 3 |  |
| 8 |  | Submit preliminary shop drawings | 10d | 2000-01-12 | 2000-01-25 | 7 |  |
| 9 |  | Submit monthly requests for payment | 1d | 2000-01-06 | 2000-01-06 | 3 |  |
| 10 | 1.2 | **Long Lead Procurement** | 70d | 2000-01-07 | 2000-04-13 |  |  |
| 11 |  | Submit shop drawings and order long lead items - steel | 10d | 2000-01-07 | 2000-01-20 | 9 |  |
| 12 |  | Submit shop drawings and order long lead items - roofing | 10d | 2000-01-26 | 2000-02-08 | 8 |  |
| 13 |  | Submit shop drawings and order long lead items - elevator | 10d | 2000-01-26 | 2000-02-08 | 8 |  |
| 14 |  | Submit shop drawings and order long lead items - plumbing | 10d | 2000-01-26 | 2000-02-08 | 8 |  |
| 15 |  | Submit shop drawings and order long lead items - electric | 10d | 2000-01-26 | 2000-02-08 | 8 |  |
| 16 |  | Submit shop drawings and order long lead items - HVAC | 10d | 2000-01-26 | 2000-02-08 | 8 |  |
| 17 |  | Detail, fabricate and deliver steel | 60d | 2000-01-21 | 2000-04-13 | 11 |  |
| 18 | 1.3 | **Mobilize on Site** | 10d | 2000-01-06 | 2000-01-19 |  |  |
| 19 |  | Install temporary power | 2d | 2000-01-06 | 2000-01-07 | 3 |  |
| 20 |  | Install temporary water service | 2d | 2000-01-06 | 2000-01-07 | 3 |  |
| 21 |  | Set up site office | 3d | 2000-01-10 | 2000-01-12 | 19, 20 |  |
| 22 |  | Set line and grade benchmarks | 3d | 2000-01-13 | 2000-01-17 | 21 |  |
| 23 |  | Prepare site - lay down yard and temporary fencing | 2d | 2000-01-18 | 2000-01-19 | 22 |  |
| 24 | 1.4 | **Site Grading and Utilities** | 35d | 2000-01-20 | 2000-03-08 |  |  |
| 25 |  | Clear and grub site | 3d | 2000-01-20 | 2000-01-24 | 21, 23 |  |
| 26 |  | Stone site access and temporary parking area | 2d | 2000-01-25 | 2000-01-26 | 25, 23 |  |
| 27 |  | Rough grade site (cut and fill) | 5d | 2000-01-27 | 2000-02-02 | 26 |  |
| 28 |  | Install storm drainage | 10d | 2000-02-03 | 2000-02-16 | 27 |  |
| 29 |  | Install exterior fire line and building fire riser | 10d | 2000-02-03 | 2000-02-16 | 27 |  |
| 30 |  | Perform final site grading | 10d | 2000-02-17 | 2000-03-01 | 28FF+1d, 29 |  |
| 31 |  | Erect building batter boards and layout building | 5d | 2000-03-02 | 2000-03-08 | 30 |  |
| 32 | 1.5 | **Foundations** | 33d | 2000-03-09 | 2000-04-24 |  |  |
| 33 |  | Excavate foundations | 10d | 2000-03-09 | 2000-03-22 | 31 |  |
| 34 |  | Excavate elevator pit | 2d | 2000-03-09 | 2000-03-10 | 31 |  |
| 35 |  | Form column piers and spread foundations | 4d | 2000-03-23 | 2000-03-28 | 33 |  |
| 36 |  | Rough-in electric and plumbing in elevator | 4d | 2000-03-13 | 2000-03-16 | 34 |  |
| 37 |  | Form elevator pit walls | 4d | 2000-03-17 | 2000-03-22 | 36 |  |
| 38 |  | Set reinforcing and anchor bolts | 4d | 2000-03-29 | 2000-04-03 | 35 |  |
| 39 |  | Pour column piers and foundations | 5d | 2000-04-04 | 2000-04-10 | 38 |  |
| 40 |  | Pour concrete elevator walls | 1d | 2000-03-23 | 2000-03-23 | 37 |  |
| 41 |  | Cure elevator wall concrete | 7d | 2000-03-24 | 2000-04-03 | 40 |  |
| 42 |  | Cure piers and foundations | 7d | 2000-04-11 | 2000-04-19 | 39 |  |
| 43 |  | Strip wall forms | 1d | 2000-04-04 | 2000-04-04 | 41 |  |
| 44 |  | Strip column piers and foundation forms | 3d | 2000-04-20 | 2000-04-24 | 42 |  |
| 45 |  | Install pneumatic tube in elevator pit | 3d | 2000-04-05 | 2000-04-07 | 43 |  |
| 46 |  | Prepare and pour concrete floor in elevator pit | 1d | 2000-04-10 | 2000-04-10 | 45 |  |
| 47 | 1.6 | **Steel Erection** | 45d | 2000-04-25 | 2000-06-26 |  |  |
| 48 |  | Erect steel columns, beams and joist - 1st and 2nd floors | 10d | 2000-04-25 | 2000-05-08 | 44, 17 |  |
| 49 |  | Erect steel columns, beams and joist - 3rd floor and roof | 10d | 2000-05-09 | 2000-05-22 | 48 |  |
| 50 |  | Install miscellaneous iron and bracing - 1st and 2nd floors | 10d | 2000-05-09 | 2000-05-22 | 48 |  |
| 51 |  | Install miscellaneous iron and bracing - 3rd floor and roof | 10d | 2000-05-23 | 2000-06-05 | 49 |  |
| 52 |  | Install stairs and miscellaneous iron railing | 10d | 2000-06-06 | 2000-06-19 | 51 |  |
| 53 |  | Touch-up paint on steel | 5d | 2000-06-20 | 2000-06-26 | 52 |  |
| 54 | 1.7 | **Form and Pour Concrete - Floors and Roof** | 85d | 2000-05-09 | 2000-09-04 |  |  |
| 55 |  | Form 2nd floor including all floor openings | 5d | 2000-06-27 | 2000-07-03 | 53, 14, 15, 16, 48 |  |
| 56 |  | Install rebar and in-floor utilities (including mechanical, electrical, plumbing) | 5d | 2000-05-09 | 2000-05-15 | 48 |  |
| 57 |  | Pour 2nd floor slab | 4d | 2000-07-04 | 2000-07-07 | 56, 55 |  |
| 58 |  | Cure 2nd floor slab | 7d | 2000-07-10 | 2000-07-18 | 57 |  |
| 59 |  | Strip forms from 2nd floor slab | 2d | 2000-07-19 | 2000-07-20 | 58 |  |
| 60 |  | Form 3rd floor including all floor openings | 5d | 2000-07-19 | 2000-07-25 | 58 |  |
| 61 |  | Install rebar and in-floor utilities (including mechanical, electrical, plumbing) | 5d | 2000-07-19 | 2000-07-25 | 58 |  |
| 62 |  | Pour 3rd floor slab | 4d | 2000-07-26 | 2000-07-31 | 61, 60 |  |
| 63 |  | Cure 3rd floor slab | 7d | 2000-08-01 | 2000-08-09 | 62 |  |
| 64 |  | Strip forms from 3rd floor slab | 2d | 2000-08-10 | 2000-08-11 | 63 |  |
| 65 |  | Form roof slab including all floor openings | 5d | 2000-08-10 | 2000-08-16 | 63 |  |
| 66 |  | Install rebar and in-floor utilities (including mechanical, electrical, plumbing) | 5d | 2000-08-10 | 2000-08-16 | 63 |  |
| 67 |  | Pour roof slab | 4d | 2000-08-17 | 2000-08-22 | 66, 65 |  |
| 68 |  | Cure roof slab | 7d | 2000-08-23 | 2000-08-31 | 67 |  |
| 69 |  | Strip forms from roof slab | 2d | 2000-09-01 | 2000-09-04 | 68 |  |
| 70 |  | Form 1st floor | 4d | 2000-07-21 | 2000-07-26 | 59 |  |

| ID | WBS | Task | Duration | Start | Finish | Predecessors |
| --- | --- | --- | --- | --- | --- | --- |
| 71 |  | Install electrical underground | 5d | 2000-07-21 | 2000-07-27 | 59 |
| 72 |  | Install plumbing underground | 5d | 2000-07-21 | 2000-07-27 | 59 |
| 73 |  | Install rebar and in-floor utilities | 4d | 2000-07-21 | 2000-07-26 | 59 |
| 74 |  | Pour 1st floor slab | 4d | 2000-07-28 | 2000-08-02 | 70, 73, 71, 72 |
| 75 |  | Cure 1st floor slab | 7d | 2000-08-03 | 2000-08-11 | 74 |
| 76 |  | Strip forms from 1st floor slab | 2d | 2000-08-14 | 2000-08-15 | 75 |
| 77 | 1.8 | **Carpentry Work** | 15d | 2000-09-05 | 2000-09-25 |  |
| 78 |  | Install exterior sheathing and metal studs | 15d | 2000-09-05 | 2000-09-25 | 64, 69 |
| 79 | 1.9 | **Masonry Work** | 110d | 2000-06-06 | 2000-11-06 |  |
| 80 |  | Rough-in plumbing at toilets and masonry walls | 20d | 2000-08-16 | 2000-09-12 | 76, 14 |
| 81 |  | Lay masonry at core, mechanical, and toilets | 20d | 2000-06-06 | 2000-07-03 | 50, 51 |
| 82 |  | Install exterior masonry work | 25d | 2000-09-26 | 2000-10-30 | 78 |
| 83 |  | Install roof drains | 2d | 2000-10-31 | 2000-11-01 | 82 |
| 84 |  | Install tile in toilet rooms | 10d | 2000-09-13 | 2000-09-26 | 80 |
| 85 |  | Clean masonry | 5d | 2000-10-31 | 2000-11-06 | 82 |
| 86 |  | Clean toilet room tile | 5d | 2000-09-27 | 2000-10-03 | 84 |
| 87 | 1.10 | **Roofing** | 31d | 2000-10-31 | 2000-12-12 |  |
| 88 |  | Install flashing at parapet walls | 4d | 2000-10-31 | 2000-11-03 | 82 |
| 89 |  | Pour lightweight concrete roof fill | 2d | 2000-11-06 | 2000-11-07 | 12, 83, 88 |
| 90 |  | Install seamless roofing material | 5d | 2000-11-15 | 2000-11-21 | 89FS+5d |
| 91 |  | Spread stone ballast on seamless roof | 5d | 2000-11-22 | 2000-11-28 | 90 |
| 92 |  | Set rooftop equipment | 10d | 2000-11-29 | 2000-12-12 | 91 |
| 93 | 1.11 | **Window wall and store front closures** | 60d | 2000-10-31 | 2001-01-22 |  |
| 94 |  | Install window wall aluminum and glass | 25d | 2000-10-31 | 2000-12-04 | 82 |
| 95 |  | Install interior stud walls and drywall | 25d | 2000-12-05 | 2001-01-08 | 94 |
| 96 |  | Install interior doors and hardware | 10d | 2001-01-09 | 2001-01-22 | 95 |
| 97 |  | Install store front doors and hardware | 15d | 2000-10-31 | 2000-11-20 | 82 |
| 98 | 1.12 | **Building Finishes** | 80d | 2000-12-05 | 2001-03-26 |  |
| 99 |  | Install millwork and wood trim | 15d | 2001-01-09 | 2001-01-29 | 97, 95 |
| 100 |  | Paint walls and woodwork | 20d | 2001-01-30 | 2001-02-26 | 99, 96 |
| 101 |  | Install conduit at ceiling plenum space | 15d | 2000-12-05 | 2000-12-25 | 94 |
| 102 |  | Install duct in ceiling plenum space | 15d | 2001-01-09 | 2001-01-29 | 95, 101 |
| 103 |  | Install ceiling grid | 10d | 2001-01-30 | 2001-02-12 | 95, 102 |
| 104 |  | Install ceiling tile | 10d | 2001-02-13 | 2001-02-26 | 103 |
| 105 |  | Hang wallpaper | 10d | 2001-02-13 | 2001-02-26 | 103 |
| 106 |  | Install building carpet | 20d | 2001-02-27 | 2001-03-26 | 100 |
| 107 |  | Install hardware and accessories | 15d | 2001-02-27 | 2001-03-19 | 100 |
| 108 |  | Complete interior and exterior sod and plantings | 10d | 2001-02-27 | 2001-03-12 | 100 |
| 109 |  | Pave, curb, and stripe parking lot | 10d | 2001-03-13 | 2001-03-26 | 108 |
| 110 | 1.13 | **Elevators** | 40d | 2000-07-04 | 2000-08-28 |  |
| 111 |  | Set elevator equipment in shafts | 20d | 2000-07-04 | 2000-07-31 | 81, 46, 13 |
| 112 |  | Set equipment in mechanical room | 10d | 2000-08-01 | 2000-08-14 | 111 |
| 113 |  | Test and align doors and equipment | 10d | 2000-08-15 | 2000-08-28 | 112 |
| 114 | 1.14 | **Plumbing** | 90d | 2000-11-07 | 2001-03-12 |  |
| 115 |  | Rough-in plumbing in drywall walls | 20d | 2000-12-05 | 2001-01-01 | 94 |
| 116 |  | Tie-in fire line riser and set valves | 10d | 2000-11-07 | 2000-11-20 | 85 |
| 117 |  | Set plumbing fixtures and trim | 15d | 2001-01-02 | 2001-01-22 | 86, 115, 80 |
| 118 |  | Flush, test, and clean piping and fixtures | 10d | 2001-02-27 | 2001-03-12 | 100, 116, 117 |
| 119 | 1.15 | **Electrical** | 139d | 2000-08-16 | 2001-02-26 |  |
| 120 |  | Rough-in electrical in masonry walls | 20d | 2000-08-16 | 2000-09-12 | 76, 15 |
| 121 |  | Rough-in electrical in drywall walls | 20d | 2000-12-05 | 2001-01-01 | 94 |
| 122 |  | Pull wire in conduit and set area transformers | 15d | 2000-12-26 | 2001-01-15 | 120, 101 |
| 123 |  | Install and terminate electrical devices | 15d | 2001-01-16 | 2001-02-05 | 122, 121 |
| 124 |  | Make electrical terminations for HVAC equipment | 2d | 2001-01-16 | 2001-01-17 | 122, 92 |
| 125 |  | Install light fixtures - test and clean | 10d | 2001-02-13 | 2001-02-26 | 103, 123 |
| 126 | 1.16 | **Heating and Ventilating - AC** | 180d | 2000-07-04 | 2001-03-12 |  |
| 127 |  | Set equipment in mechanical room | 10d | 2000-07-04 | 2000-07-17 | 81, 16 |
| 128 |  | Rough-in mechanical in masonry walls | 20d | 2000-08-16 | 2000-09-12 | 76 |
| 129 |  | Rough-in mechanical in drywall walls | 10d | 2000-12-05 | 2000-12-18 | 94 |
| 130 |  | Install duct in building chase | 15d | 2000-12-05 | 2000-12-25 | 127, 128, 94 |
| 131 |  | Set HVAC trim and test and balance system | 20d | 2001-02-13 | 2001-03-12 | 103, 130, 124 |
| 132 | 1.17 | **Final Clean-up and Occupancy** | 60d | 2001-01-09 | 2001-04-02 |  |
| 133 |  | Install hard tile flooring in common areas | 5d | 2001-01-09 | 2001-01-15 | 95 |
| 134 |  | Clean hard tile floors | 4d | 2001-01-16 | 2001-01-19 | 133 |
| 135 |  | Remove debris from building and do final clean-up | 4d | 2001-03-27 | 2001-03-30 | 106, 105, 107, 108, 118, 125, 104, 134 |
| 136 |  | Substantial completion date | 1d | 2001-04-02 | 2001-04-02 | 135 |
| 137 | 1.18 | **Complete Final Inspections** | 6d | 2001-04-02 | 2001-04-09 |  |
| 138 |  | Complete elevator inspection and certification | 3d | 2001-04-02 | 2001-04-04 | 135, 113 |
| 139 |  | Perform architect's inspection | 1d | 2001-04-05 | 2001-04-05 | 135, 109, 138 |
| 140 |  | Perform local building agency inspection | 1d | 2001-04-06 | 2001-04-06 | 139 |

| ID | Task | Duration | Start | Finish | Predecessors |
| --- | --- | --- | --- | --- | --- |
| 141 | Perform Fire Marshal's inspection | 1d | 2001-04-09 | 2001-04-09 | 140 |
| 142 | Complete punch list items from all inspections | 10d | 2001-04-10 | 2001-04-23 | 141 |
| 143 | Obtain certificate of occupancy | 2d | 2001-04-24 | 2001-04-25 | 142 |
| 144 | Issue final completion documents including warranties | 1d | 2001-04-24 | 2001-04-24 | 142 |
| 145 | Issue final request for payment | 1d | 2001-04-26 | 2001-04-26 | 143, 144 |

## Version 2 (saved 2026-05-18)

Note of the change: refactor: modernize codebase - Vector→ArrayList, Hashtable→HashMap, StringBuffer→StringBuilder

Last finish stays 2001-04-26.

Changed:

| ID | Task | Complete |
| --- | --- | --- |
| 2 | **General Conditions** | 9% → 7% |
| 3 | Receive notice to proceed and sign contract | 0% → 100% |
| 4 | Submit bond and insurance documents | 100% → 0% |

## Version 3 (saved 2026-05-24)

Note of the change: modify ribbon UI

Last finish stays 2001-04-26. Complete tasks 1 → 2.

Changed:

| ID | Task | Start | Finish | Complete | Predecessors |
| --- | --- | --- | --- | --- | --- |
| 1 | **Three-story Office Building (76,000 square feet)** |  |  | 0% → 1% |  |
| 4 | Submit bond and insurance documents | 2000-01-06 → 2000-01-03 (-3d) | 2000-01-07 → 2000-01-04 (-3d) |  | 3 → none |
| 5 | Prepare and submit project schedule | 2000-01-10 → 2000-01-05 (-5d) | 2000-01-11 → 2000-01-06 (-5d) |  |  |
| 6 | Prepare and submit schedule of values | 2000-01-12 → 2000-01-07 (-5d) | 2000-01-13 → 2000-01-10 (-3d) |  |  |
| 10 | **Long Lead Procurement** |  |  | 0% → 6% |  |
| 13 | Submit shop drawings and order long lead items - elevator |  |  | 0% → 100% |  |
